# SDK 4.0

Schedule from MS Project, 2007-01-19 to 2007-12-21, A marks actual dates.
NCI

## Calendars

- Standard: Mon-Fri 08:00-12:00, 13:00-17:00; Sat-Sun off. Exceptions (off unless hours are given): 2007-02-05 to 2007-02-07, 2007-07-04.

## Resources

| Resource |
| --- |
| Satish |
| Dan |
| Charles |
| Avinash |
| Steve |
| Kunal |
| Doug |
| Satish/Kunal |
| Dan/Kunal |
| Ye |
| C |
| caGrid |
| Kunal/Satish |
| Satish/Dan |
| Christophe |
| Steve A. |
| Ye Wu |
| Vijay |
| Doug M. |
| 177 |
| SDK Users |
| Terpsys |
| QA |
| Aynor |
| Ekagra |
| Wendy |
| D |
| Aynur |

## Schedule

| ID | WBS | Task | Type | Duration | Start | Finish | Predecessors | Complete | Remaining | Baseline start | Baseline finish | Baseline duration | Total slack | Constraint | Resources | Work | Actual work |
| --- | --- | --- | --- | --- | --- | --- | --- | --- | --- | --- | --- | --- | --- | --- | --- | --- | --- |
| 1 | 1 | **caCORE SDK v4.0** |  | 202d? | 2007-01-19 A | 2007-11-02 |  | 98% | 3.34d? | 2007-01-19 | 2007-09-06 | 160.5d? | 34.5d |  |  | 3826h | 3746h |
| 2 | 1.1 | **Inception** |  | 3d | 2007-01-19 A | 2007-01-23 A |  | 100% |  | 2007-01-19 | 2007-01-23 | 3d |  |  |  | 8h | 8h |
| 3 | 1.1.1 | 4.0 Kickoff meeting | milestone | 0d | 2007-01-19 A | 2007-01-19 A |  | 100% |  | 2007-01-19 | 2007-01-19 | 0d |  | start no earlier than 2007-01-19 | Satish; Charles; Dan; Steve |  |  |
| 4 | 1.1.2 | Create initial task plan |  | 1d | 2007-01-23 A | 2007-01-23 A |  | 100% |  | 2007-01-23 | 2007-01-23 | 1d |  |  | Satish | 8h | 8h |
| 5 | 1.2 | **Elaboration** |  | 13d | 2007-01-23 A | 2007-02-13 A |  | 100% |  | 2007-01-23 | 2007-02-13 | 13d |  |  |  | 246h | 246h |
| 6 | 1.2.1 | **Requiements meetings** |  | 6.25d | 2007-01-23 A | 2007-01-31 A |  | 100% |  | 2007-01-23 | 2007-01-31 | 6.25d |  |  |  | 78h | 78h |
| 7 | 1.2.1.1 | Requirements meeting (CGEMS, Rambrandt) |  | 0.25d | 2007-01-29 A | 2007-01-29 A |  | 100% |  | 2007-01-29 | 2007-01-29 | 0.25d |  | start no earlier than 2007-01-29 | Satish; Dan; Steve | 6h | 6h |
| 8 | 1.2.1.2 | Requirements Meeting (caCORE API) |  | 0.25d | 2007-01-23 A | 2007-01-23 A |  | 100% |  | 2007-01-23 | 2007-01-23 | 0.25d |  |  | Satish; Dan; Steve | 6h | 6h |
| 9 | 1.2.1.3 | Requirements meeting (caAdapter) |  | 0.25d | 2007-01-30 A | 2007-01-30 A |  | 100% |  | 2007-01-30 | 2007-01-30 | 0.25d |  | start no earlier than 2007-01-30 | Satish; Dan; Steve | 6h | 6h |
| 10 | 1.2.1.4 | Requirements meeting (caDSR) |  | 0.25d | 2007-01-30 A | 2007-01-30 A |  | 100% |  | 2007-01-30 | 2007-01-30 | 0.25d |  | start no earlier than 2007-01-30 | Satish; Dan; Steve | 6h | 6h |
| 11 | 1.2.1.5 | Requirements meeting (caGRID) |  | 0.25d | 2007-01-31 A | 2007-01-31 A |  | 100% |  | 2007-01-31 | 2007-01-31 | 0.25d |  | start no earlier than 2007-01-31 | Satish; Dan; Steve | 6h | 6h |
| 12 | 1.2.1.6 | Requirements meeting (other teams) |  | 2d | 2007-01-29 A | 2007-01-30 A |  | 100% |  | 2007-01-29 | 2007-01-30 | 2d |  | start no earlier than 2007-01-29 | Satish; Dan; Steve | 48h | 48h |
| 13 | 1.2.2 | **Scope Document** |  | 10d | 2007-01-26 A | 2007-02-13 A |  | 100% |  | 2007-01-26 | 2007-02-13 | 10d |  |  |  | 88h | 88h |
| 14 | 1.2.2.1 | Prepare list of scope items on gforge |  | 1d | 2007-01-26 A | 2007-01-26 A |  | 100% |  | 2007-01-26 | 2007-01-26 | 1d |  | start no earlier than 2007-01-26 | Satish | 8h | 8h |
| 15 | 1.2.2.2 | Draft scope document |  | 3d | 2007-01-29 A | 2007-01-31 A | 14 | 100% |  | 2007-01-29 | 2007-01-31 | 3d |  |  | Charles | 24h | 24h |
| 16 | 1.2.2.3 | Estimate LOE for Iteration 1 - 3 scope items |  | 1d | 2007-02-01 A | 2007-02-01 A | 15 | 100% |  | 2007-02-01 | 2007-02-01 | 1d |  |  | Satish | 8h | 8h |
| 17 | 1.2.2.4 | Prepare risk list |  | 1d | 2007-02-02 A | 2007-02-02 A | 16 | 100% |  | 2007-02-02 | 2007-02-02 | 1d |  |  | Charles; Satish | 16h | 16h |
| 18 | 1.2.2.5 | NCICB Review of scope document |  | 3d | 2007-02-08 A | 2007-02-12 A | 17 | 100% |  | 2007-02-08 | 2007-02-12 | 3d |  |  | Avinash | 24h | 24h |
| 19 | 1.2.2.6 | Revise scope document |  | 1d | 2007-02-13 A | 2007-02-13 A | 18 | 100% |  | 2007-02-13 | 2007-02-13 | 1d |  |  | Charles | 8h | 8h |
| 20 | 1.2.3 | **QA Actvities** |  | 7d | 2007-01-23 A | 2007-01-31 A |  | 100% |  | 2007-01-23 | 2007-01-31 | 7d |  |  |  | 72h | 72h |
| 21 | 1.2.3.1 | Setup QA repository | milestone | 0d | 2007-01-23 A | 2007-01-23 A |  | 100% |  | 2007-01-23 | 2007-01-23 | 0d |  |  | Steve |  |  |
| 22 | 1.2.3.2 | Modify Unit test cases and data |  | 5d | 2007-01-23 A | 2007-01-29 A | 21 | 100% |  | 2007-01-23 | 2007-01-29 | 5d |  |  | Steve | 40h | 40h |
| 23 | 1.2.3.3 | Validate test case |  | 2d | 2007-01-30 A | 2007-01-31 A | 22 | 100% |  | 2007-01-30 | 2007-01-31 | 2d |  |  | Steve; Satish | 32h | 32h |
| 24 | 1.2.4 | Revise task plan |  | 0.5d | 2007-01-23 A | 2007-01-23 A |  | 100% |  | 2007-01-23 | 2007-01-23 | 0.5d |  |  | Charles; Satish | 8h | 8h |

| ID | WBS | Task | Duration | Start | Finish | Predecessors | Complete | Baseline start | Baseline finish | Baseline duration | Constraint | Resources | Work | Actual work |
| --- | --- | --- | --- | --- | --- | --- | --- | --- | --- | --- | --- | --- | --- | --- |
| 25 | 1.3 | **Construction** | 150d? | 2007-01-23 A | 2007-08-24 A |  | 100% | 2007-01-23 | 2007-08-20 | 145.5d? |  |  | 2936h | 2936h |
| 26 | 1.3.1 | **Iteration 1** | 44d | 2007-01-23 A | 2007-03-28 A |  | 100% | 2007-01-23 | 2007-03-28 | 44d |  |  | 802h | 802h |
| 27 | 1.3.1.1 | **SDK 3.2.1 Release** | 14d | 2007-01-23 A | 2007-02-14 A |  | 100% | 2007-01-23 | 2007-02-14 | 14d |  |  | 112h | 112h |
| 28 | 1.3.1.1.1 | Integrate new UI | 14d | 2007-01-23 A | 2007-02-14 A |  | 100% | 2007-01-23 | 2007-02-14 | 14d |  | Dan | 112h | 112h |
| 29 | 1.3.1.2 | **QA** | 3d | 2007-02-15 A | 2007-02-19 A |  | 100% | 2007-02-15 | 2007-02-19 | 3d |  |  | 24h | 24h |
| 30 | 1.3.1.2.1 | Test new UI | 3d | 2007-02-15 A | 2007-02-19 A | 28 | 100% | 2007-02-15 | 2007-02-19 | 3d |  | Steve | 24h | 24h |
| 31 | 1.3.1.3 | **caGrid Integration** | 33d | 2007-02-12 A | 2007-03-28 A |  | 100% | 2007-02-12 | 2007-03-28 | 33d |  |  | 666h | 666h |
| 32 | 1.3.1.3.1 | **Support multiple concurrent users on the same ApplicationService** | 13.5d | 2007-02-12 A | 2007-03-01 A |  | 100% | 2007-02-12 | 2007-03-01 | 13.5d |  |  | 112h | 112h |
| 33 | 1.3.1.3.1.1 | Design | 3d | 2007-02-12 A | 2007-02-14 A |  | 100% | 2007-02-12 | 2007-02-14 | 3d |  | Satish/Kunal | 24h | 24h |
| 34 | 1.3.1.3.1.2 | Prototype | 3d | 2007-02-15 A | 2007-02-19 A | 33 | 100% | 2007-02-15 | 2007-02-19 | 3d |  | Satish | 24h | 24h |
| 35 | 1.3.1.3.1.3 | Design Review | 0.5d | 2007-02-20 A | 2007-02-20 A | 34 | 100% | 2007-02-20 | 2007-02-20 | 0.5d |  | Satish; Kunal; Doug; Avinash | 16h | 16h |
| 36 | 1.3.1.3.1.4 | Design Update/Prototype | 3d | 2007-02-20 A | 2007-02-23 A | 35 | 100% | 2007-02-20 | 2007-02-23 | 3d |  | Satish | 24h | 24h |
| 37 | 1.3.1.3.1.5 | Development | 3d | 2007-02-26 A | 2007-03-01 A | 38 | 100% | 2007-02-26 | 2007-03-01 | 3d |  | Satish | 24h | 24h |
| 38 | 1.3.1.3.2 | Use documentation in the Java docs (GF#1243) & Integrate JavaDocs in the web system | 2d | 2007-02-23 A | 2007-02-27 A | 36 | 100% | 2007-02-23 | 2007-02-27 | 2d |  | Satish | 16h | 16h |
| 39 | 1.3.1.3.3 | **Security** | 10.5d | 2007-02-27 A | 2007-03-13 A |  | 100% | 2007-02-27 | 2007-03-13 | 10.5d |  |  | 128h | 128h |
| 40 | 1.3.1.3.3.1 | Implement Security in Thick Client | 4d | 2007-02-27 A | 2007-03-05 A | 38 | 100% | 2007-02-27 | 2007-03-05 | 4d |  | Satish | 32h | 32h |
| 41 | 1.3.1.3.3.2 | **Integration of new Installation Process into SDK** | 3d | 2007-03-02 A | 2007-03-06 A |  | 100% | 2007-03-02 | 2007-03-06 | 3d |  |  | 24h | 24h |
| 42 | 1.3.1.3.3.2.1 | Code | 3d | 2007-03-02 A | 2007-03-06 A |  | 100% | 2007-03-02 | 2007-03-06 | 3d | start no earlier than 2007-03-02 | Kunal | 24h | 24h |
| 43 | 1.3.1.3.3.3 | **Upgrade to CSM to Support Grid ability to leverage new CSM installation steps** | 3d | 2007-03-07 A | 2007-03-09 A |  | 100% | 2007-03-07 | 2007-03-09 | 3d |  |  | 24h | 24h |
| 44 | 1.3.1.3.3.3.1 | Code | 3d | 2007-03-07 A | 2007-03-09 A | 41 | 100% | 2007-03-07 | 2007-03-09 | 3d |  | Kunal | 24h | 24h |
| 45 | 1.3.1.3.3.4 | **Configurable Authentication and Authorization for SDK Generated System** | 4d | 2007-03-08 A | 2007-03-13 A |  | 100% | 2007-03-08 | 2007-03-13 | 4d |  |  | 32h | 32h |
| 46 | 1.3.1.3.3.4.1 | Code | 4d | 2007-03-08 A | 2007-03-13 A |  | 100% | 2007-03-08 | 2007-03-13 | 4d | start no earlier than 2007-03-08 | Satish | 32h | 32h |
| 47 | 1.3.1.3.3.5 | **Documentation** | 2d | 2007-03-12 A | 2007-03-13 A |  | 100% | 2007-03-12 | 2007-03-13 | 2d |  |  | 16h | 16h |
| 48 | 1.3.1.3.3.5.1 | SDK Programmer's/Technical Guide | 2d | 2007-03-12 A | 2007-03-13 A | 43 | 100% | 2007-03-12 | 2007-03-13 | 2d |  | Kunal/Satish | 16h | 16h |
| 49 | 1.3.1.3.4 | Castor related work was performed on SDK 3.1 branch move to SDK 3.2 | 3d | 2007-02-15 A | 2007-02-19 A | 28 | 100% | 2007-02-15 | 2007-02-19 | 3d |  | Dan | 24h | 24h |
| 50 | 1.3.1.3.5 | Castor mapping for inheritance defect (GF#4031) | 0.25d | 2007-02-20 A | 2007-02-20 A | 49 | 100% | 2007-02-20 | 2007-02-20 | 0.25d |  | Dan | 2h | 2h |

| ID | WBS | Task | Type | Duration | Start | Finish | Predecessors | Complete | Baseline start | Baseline finish | Baseline duration | Constraint | Resources | Work | Actual work |
| --- | --- | --- | --- | --- | --- | --- | --- | --- | --- | --- | --- | --- | --- | --- | --- |
| 51 | 1.3.1.3.6 | **Performance due to unnecessary nested sub-selects** |  | 6d | 2007-02-20 A | 2007-02-28 A | 50 | 100% | 2007-02-20 | 2007-02-28 | 6d |  |  | 48h | 48h |
| 52 | 1.3.1.3.6.1 | Analysis/Development |  | 6d | 2007-02-20 A | 2007-02-28 A |  | 100% | 2007-02-20 | 2007-02-28 | 6d |  | Dan | 48h | 48h |
| 53 | 1.3.1.3.7 | Provide the ability to only generate an XSD and castor mapping based on xmi input |  | 2d | 2007-02-28 A | 2007-03-02 A | 51 | 100% | 2007-02-28 | 2007-03-02 | 2d |  | Dan | 16h | 16h |
| 54 | 1.3.1.3.8 | Ability to generate interfaces/POJO for domain classes in our UML model |  | 3d | 2007-03-02 A | 2007-03-07 A | 53 | 100% | 2007-03-02 | 2007-03-07 | 3d |  | Dan | 24h | 24h |
| 55 | 1.3.1.3.9 | **QA** |  | 25d | 2007-02-20 A | 2007-03-26 A |  | 100% | 2007-02-20 | 2007-03-26 | 25d |  |  | 200h | 200h |
| 56 | 1.3.1.3.9.1 | Test Development |  | 7d | 2007-02-20 A | 2007-02-28 A | 30 | 100% | 2007-02-20 | 2007-02-28 | 7d | start no earlier than 2007-02-14 | Steve | 56h | 56h |
| 57 | 1.3.1.3.9.2 | Test Execution |  | 9d | 2007-03-14 A | 2007-03-26 A | 39, 56 | 100% | 2007-03-14 | 2007-03-26 | 9d |  | Steve | 72h | 72h |
| 58 | 1.3.1.3.9.3 | Test Support |  | 9d | 2007-03-14 A | 2007-03-26 A | 39 | 100% | 2007-03-14 | 2007-03-26 | 9d |  | Satish/Dan | 72h | 72h |
| 59 | 1.3.1.3.10 | **Documentation** |  | 4.75d | 2007-03-20 A | 2007-03-27 A |  | 100% | 2007-03-20 | 2007-03-27 | 4.75d |  |  | 32h | 32h |
| 60 | 1.3.1.3.10.1 | Update Programmers Guide, Release Notes |  | 3d | 2007-03-20 A | 2007-03-23 A |  | 100% | 2007-03-20 | 2007-03-23 | 3d |  | Dan | 24h | 24h |
| 61 | 1.3.1.3.10.2 | Review |  | 0.5d | 2007-03-26 A | 2007-03-26 A | 60 | 100% | 2007-03-26 | 2007-03-26 | 0.5d |  | Dan | 4h | 4h |
| 62 | 1.3.1.3.10.3 | Final |  | 0.5d | 2007-03-27 A | 2007-03-27 A | 61 | 100% | 2007-03-27 | 2007-03-27 | 0.5d |  | Dan | 4h | 4h |
| 63 | 1.3.1.3.11 | Release Packaging |  | 2d | 2007-03-21 A | 2007-03-28 A | 57 | 100% | 2007-03-21 | 2007-03-28 | 2d |  | Satish | 16h | 16h |
| 64 | 1.3.1.3.12 | **Iteration Plan** |  | 2d | 2007-03-27 A | 2007-03-28 A | 57 | 100% | 2007-03-27 | 2007-03-28 | 2d |  |  | 48h | 48h |
| 65 | 1.3.1.3.12.1 | Review Client Feature Request/Revise Task Plan |  | 2d | 2007-03-27 A | 2007-03-28 A |  | 100% | 2007-03-27 | 2007-03-28 | 2d |  | Charles; Avinash; Satish | 48h | 48h |
| 66 | 1.3.1.4 | 3.2.1 Release Complete | milestone | 0d | 2007-03-28 A | 2007-03-28 A | 65 | 100% | 2007-03-28 | 2007-03-28 | 0d |  |  |  |  |
| 67 | 1.3.2 | **Iteration 2** |  | 65d? | 2007-03-27 A | 2007-06-25 A |  | 100% | 2007-03-27 | 2007-06-21 | 63d? |  |  | 710h | 710h |
| 68 | 1.3.2.1 | **SDK 4.0 Release (Beta 1)** |  | 65d? | 2007-03-27 A | 2007-06-25 A |  | 100% | 2007-03-27 | 2007-06-21 | 63d? |  |  | 710h | 710h |
| 69 | 1.3.2.1.1 | Update Requirements Document |  | 5d | 2007-03-29 A | 2007-04-04 A | 65 | 100% | 2007-03-29 | 2007-04-04 | 5d |  | Charles [15%] | 6h | 6h |
| 70 | 1.3.2.1.2 | **Boot Camp Support** |  | 14d | 2007-04-09 A | 2007-04-26 A |  | 100% | 2007-04-09 | 2007-04-26 | 14d |  |  | 64h | 64h |
| 71 | 1.3.2.1.2.1 | Presentation |  | 4d | 2007-04-09 A | 2007-04-12 A |  | 100% | 2007-04-09 | 2007-04-12 | 4d | start no earlier than 2007-04-09 | Satish | 32h | 32h |
| 72 | 1.3.2.1.2.2 | Demo |  | 2d | 2007-04-18 A | 2007-04-19 A |  | 100% | 2007-04-18 | 2007-04-19 | 2d | start no earlier than 2007-04-18 | Satish | 16h | 16h |
| 73 | 1.3.2.1.2.3 | Demo |  | 2d | 2007-04-25 A | 2007-04-26 A |  | 100% | 2007-04-25 | 2007-04-26 | 2d | start no earlier than 2007-04-25 | Satish | 16h | 16h |
| 74 | 1.3.2.1.3 | **Upgrade Code Generation Framework** |  | 55d? | 2007-03-27 A | 2007-06-11 A |  | 100% | 2007-03-27 | 2007-06-07 | 53d? |  |  | 416h | 416h |
| 75 | 1.3.2.1.3.1 | Prototype of new Code Gen Framework |  | 10d | 2007-03-27 A | 2007-04-09 A | 58 | 100% | 2007-03-27 | 2007-04-09 | 10d |  | Satish [50%] | 40h | 40h |
| 76 | 1.3.2.1.3.2 | Prototype use of ACEGI/CSM for Security |  | 10d | 2007-03-27 A | 2007-04-09 A | 58 | 100% | 2007-03-27 | 2007-04-09 | 10d |  | Satish [50%] | 40h | 40h |

| ID | WBS | Task | Duration | Start | Finish | Predecessors | Complete | Baseline start | Baseline finish | Baseline duration | Constraint | Resources | Work | Actual work |
| --- | --- | --- | --- | --- | --- | --- | --- | --- | --- | --- | --- | --- | --- | --- |
| 77 | 1.3.2.1.3.3 | **Design** | 8.2d? | 2007-04-13 A | 2007-04-25 A |  | 100% | 2007-04-13 | 2007-04-25 | 8.2d? |  |  | 64h | 64h |
| 78 | 1.3.2.1.3.3.1 | Overview | 1d | 2007-04-13 A | 2007-04-13 A | 71 | 100% | 2007-04-13 | 2007-04-13 | 1d |  | Satish | 8h | 8h |
| 79 | 1.3.2.1.3.3.2 | Review of Approach | 0.2d | 2007-04-16 A | 2007-04-16 A | 78 | 100% | 2007-04-16 | 2007-04-16 | 0.2d |  | Satish; Doug; Kunal; Vijay; Charles | 8h | 8h |
| 80 | 1.3.2.1.3.3.3 | Code Gen Detail Design | 2d | 2007-04-16 A | 2007-04-18 A | 79 | 100% | 2007-04-16 | 2007-04-18 | 2d |  | Satish | 16h | 16h |
| 81 | 1.3.2.1.3.3.4 | ACEGI/CSM Security Detail Design | 2d | 2007-04-20 A | 2007-04-23 A | 72 | 100% | 2007-04-20 | 2007-04-23 | 2d |  | Satish | 16h | 16h |
| 82 | 1.3.2.1.3.3.5 | Design/Prototype Review | 0.2d? | 2007-04-24 A | 2007-04-24 A | 81 | 100% | 2007-04-24 | 2007-04-24 | 0.2d? |  | Satish; Doug; Kunal; Vijay; Charles | 8h | 8h |
| 83 | 1.3.2.1.3.3.6 | Design Update | 1d | 2007-04-24 A | 2007-04-25 A | 82 | 100% | 2007-04-24 | 2007-04-25 | 1d |  | Satish | 8h | 8h |
| 84 | 1.3.2.1.3.4 | Implement new code generation framework | 3d | 2007-04-27 A | 2007-05-01 A | 77, 73 | 100% | 2007-04-27 | 2007-05-01 | 3d |  | Satish | 24h | 24h |
| 85 | 1.3.2.1.3.5 | Rewrite bean generation for JDK 1.5 | 2d | 2007-05-02 A | 2007-05-03 A | 84 | 100% | 2007-05-02 | 2007-05-03 | 2d |  | Satish | 16h | 16h |
| 86 | 1.3.2.1.3.6 | Rewrite O/R mapping generation (.hbm.xml, .cfg.xml, ehcache.xml) | 10d | 2007-05-04 A | 2007-05-31 A | 85 | 100% | 2007-05-04 | 2007-05-31 | 10d |  | Satish | 80h | 80h |
| 87 | 1.3.2.1.3.7 | **Implement class cache for JDK 1.5** | 16d | 2007-05-17 A | 2007-06-08 A | 94 | 100% | 2007-05-11 | 2007-05-22 | 7d |  |  | 56h | 56h |
| 88 | 1.3.2.1.3.7.1 | Development | 4d | 2007-05-17 A | 2007-05-23 A |  | 100% | 2007-05-11 | 2007-05-17 | 4d |  | Dan | 32h | 32h |
| 89 | 1.3.2.1.3.7.2 | Integration of class cache in web tier | 1d | 2007-05-23 A | 2007-05-24 A | 88 | 100% | 2007-05-17 | 2007-05-18 | 1d |  | Dan | 8h | 8h |
| 90 | 1.3.2.1.3.7.3 | Change nestedCriteria to use class cache | 1d | 2007-05-24 A | 2007-05-25 A | 89 | 100% | 2007-05-18 | 2007-05-21 | 1d |  | Dan | 8h | 8h |
| 91 | 1.3.2.1.3.7.4 | Change CQL translator to use class cache | 1d | 2007-05-25 A | 2007-06-08 A | 90 | 100% | 2007-05-21 | 2007-05-22 | 1d |  | Dan | 8h | 8h |
| 92 | 1.3.2.1.3.8 | XMI Processor Refactoring | 1d | 2007-06-08 A | 2007-06-11 A | 91 | 100% |  |  |  |  | Dan | 8h | 8h |
| 93 | 1.3.2.1.3.9 | Rewrite XML schema generaotor | 2d | 2007-05-11 A | 2007-05-15 A | 118, 122 | 100% | 2007-05-22 | 2007-05-24 | 2d |  | Dan | 16h | 16h |
| 94 | 1.3.2.1.3.10 | Rewrite XML mapping file generator | 2d | 2007-05-15 A | 2007-05-17 A | 93 | 100% | 2007-05-24 | 2007-05-28 | 2d |  | Dan | 16h | 16h |
| 95 | 1.3.2.1.3.11 | Build Script | 2d | 2007-06-08 A | 2007-06-11 A | 96 | 100% | 2007-05-28 | 2007-05-30 | 2d |  | Satish | 16h | 16h |
| 96 | 1.3.2.1.3.12 | Provide Generic Test Program for Testing O/R Mapping Files for DAO | 4d | 2007-06-04 A | 2007-06-07 A | 97 | 100% | 2007-06-01 | 2007-06-07 | 5d |  | Satish | 32h | 32h |
| 97 | 1.3.2.1.3.13 | Presentation for caCORE Users | 1d | 2007-06-01 A | 2007-06-01 A | 86 | 100% |  |  |  |  | Satish | 8h | 8h |
| 98 | 1.3.2.1.4 | **QA** | 12d | 2007-06-08 A | 2007-06-25 A |  | 100% | 2007-04-30 | 2007-06-21 | 39d |  |  | 200h | 200h |
| 99 | 1.3.2.1.4.1 | Test Development | 5d | 2007-06-08 A | 2007-06-14 A | 77 | 100% | 2007-04-30 | 2007-05-11 | 10d | start no earlier than 2007-06-08 | QA | 40h | 40h |
| 100 | 1.3.2.1.4.2 | Test Execution | 10d | 2007-06-12 A | 2007-06-25 A | 74 | 100% | 2007-06-08 | 2007-06-21 | 10d |  | QA | 80h | 80h |
| 101 | 1.3.2.1.4.3 | Test Support | 10d | 2007-06-12 A | 2007-06-25 A | 74 | 100% | 2007-06-08 | 2007-06-21 | 10d |  | Satish [50%] | 40h | 40h |
| 102 | 1.3.2.1.4.4 | Documentation | 10d | 2007-06-12 A | 2007-06-25 A | 74 | 100% | 2007-06-08 | 2007-06-21 | 10d |  | Satish [50%] | 40h | 40h |

Notes:
- 84: ·Combine generation steps so that XMI file is read only once / ·Implement model validation routine as common project
- 85: ·Support for java 1.5 generics / ·Allow to use visibility specified in UML tool / ·Allow to use primitives
- 86: ·Support for alternate way of mapping inheritance / ·Many to One and One to Many do not support correlation table / ·Lazy attribute in UML model / ·Cascade operations in UML model (need to check with Avinash to see if this belongs in 4.0)
- 93: ·Use pulicId and version in the xml schema

| ID | WBS | Task | Type | Duration | Start | Finish | Predecessors | Complete | Baseline start | Baseline finish | Baseline duration | Constraint | Resources | Work | Actual work |
| --- | --- | --- | --- | --- | --- | --- | --- | --- | --- | --- | --- | --- | --- | --- | --- |
| 103 | 1.3.2.1.5 | **Iteration Plan** |  | 1d | 2007-06-08 A | 2007-06-11 A |  | 100% | 2007-05-22 | 2007-05-23 | 1d |  |  | 24h | 24h |
| 104 | 1.3.2.1.5.1 | Review Client Feature Request/Revise Task Plan |  | 1d | 2007-06-08 A | 2007-06-11 A | 91 | 100% | 2007-05-22 | 2007-05-23 | 1d |  | Charles; Avinash; Satish | 24h | 24h |
| 105 | 1.3.3 | **Iteration 3** |  | 47.25d | 2007-03-07 A | 2007-05-11 A |  | 100% | 2007-03-07 | 2007-05-11 | 47.25d |  |  | 550h | 550h |
| 106 | 1.3.3.1 | **Release 4.0 (Open Source UML Tool Support)** |  | 47.25d | 2007-03-07 A | 2007-05-11 A |  | 100% | 2007-03-07 | 2007-05-11 | 47.25d |  |  | 550h | 550h |
| 107 | 1.3.3.1.1 | Update Requirements Document |  | 5d | 2007-04-05 A | 2007-04-11 A | 69 | 100% | 2007-04-05 | 2007-04-11 | 5d |  | Charles [15%] | 6h | 6h |
| 108 | 1.3.3.1.2 | **Open Source Modeling Tool XMI Processor** |  | 37.25d | 2007-03-07 A | 2007-04-27 A |  | 100% | 2007-03-07 | 2007-04-27 | 37.25d |  |  | 288h | 288h |
| 109 | 1.3.3.1.2.1 | Evaluation |  | 4d | 2007-03-07 A | 2007-04-02 A | 62 | 100% | 2007-03-07 | 2007-04-02 | 4d |  | Dan | 32h | 32h |
| 110 | 1.3.3.1.2.2 | Present Evaluation for review |  | 0.5d | 2007-04-02 A | 2007-04-02 A | 109 | 100% | 2007-04-02 | 2007-04-02 | 0.5d |  | Dan | 4h | 4h |
| 111 | 1.3.3.1.2.3 | Build SDK Test Model |  | 3d | 2007-04-02 A | 2007-04-05 A | 110 | 100% | 2007-04-02 | 2007-04-05 | 3d |  |  |  |  |
| 112 | 1.3.3.1.2.4 | Revise Evaluation/Finalize On Tool |  | 3d | 2007-04-05 A | 2007-04-09 A | 111 | 100% | 2007-04-05 | 2007-04-09 | 3d |  | Dan | 24h | 24h |
| 113 | 1.3.3.1.2.5 | Design |  | 2d | 2007-04-10 A | 2007-04-11 A | 112 | 100% | 2007-04-10 | 2007-04-11 | 2d |  | Dan | 16h | 16h |
| 114 | 1.3.3.1.2.6 | Design Review |  | 1d | 2007-04-12 A | 2007-04-12 A | 113 | 100% | 2007-04-12 | 2007-04-12 | 1d | start no earlier than 2007-04-09 | Dan; Satish; Christophe; Ye | 32h | 32h |
| 115 | 1.3.3.1.2.7 | Finalize Design |  | 0.5d | 2007-04-13 A | 2007-04-13 A | 114 | 100% | 2007-04-13 | 2007-04-13 | 0.5d |  | Dan | 4h | 4h |
| 116 | 1.3.3.1.2.8 | Evaluate LOE/Revise Task Plan for Development |  | 4d | 2007-04-13 A | 2007-04-19 A | 115 | 100% | 2007-04-13 | 2007-04-19 | 4d |  | Charles; Steve A.; Ye Wu | 96h | 96h |
| 117 | 1.3.3.1.2.9 | Development |  | 10d | 2007-04-13 A | 2007-04-27 A | 115 | 100% | 2007-04-13 | 2007-04-27 | 10d |  | Dan | 80h | 80h |
| 118 | 1.3.3.1.3 | **QA** |  | 20d | 2007-04-13 A | 2007-05-11 A |  | 100% | 2007-04-13 | 2007-05-11 | 20d |  |  | 152h | 152h |
| 119 | 1.3.3.1.3.1 | Test Development |  | 5d | 2007-04-13 A | 2007-04-20 A | 115 | 100% | 2007-04-13 | 2007-04-20 | 5d |  | QA | 40h | 40h |
| 120 | 1.3.3.1.3.2 | Test Execution |  | 10d | 2007-04-27 A | 2007-05-11 A | 117 | 100% | 2007-04-27 | 2007-05-11 | 10d |  | QA | 80h | 80h |
| 121 | 1.3.3.1.3.3 | Test Support |  | 8d | 2007-04-27 A | 2007-05-09 A | 117 | 100% | 2007-04-27 | 2007-05-09 | 8d |  | Dan [50%] | 32h | 32h |
| 122 | 1.3.3.1.4 | Release Packaging |  | 8d | 2007-04-27 A | 2007-05-09 A | 117 | 100% | 2007-04-27 | 2007-05-09 | 8d |  | Dan [50%] | 32h | 32h |
| 123 | 1.3.3.1.5 | **Iteration Plan** |  | 3d | 2007-04-27 A | 2007-05-02 A |  | 100% | 2007-04-27 | 2007-05-02 | 3d |  |  | 72h | 72h |
| 124 | 1.3.3.1.5.1 | Review Client Feature Request/Revise Task Plan |  | 3d | 2007-04-27 A | 2007-05-02 A | 117 | 100% | 2007-04-27 | 2007-05-02 | 3d |  | Charles; Avinash; Satish | 72h | 72h |
| 125 | 1.3.3.1.6 | Iteration 3 Complete | milestone | 0d | 2007-05-11 A | 2007-05-11 A | 118, 123 | 100% | 2007-05-11 | 2007-05-11 | 0d |  |  |  |  |
| 126 | 1.3.4 | **Iteration 4** |  | 53.5d? | 2007-06-11 A | 2007-08-24 A |  | 100% | 2007-05-30 | 2007-08-20 | 57d |  |  | 874h | 874h |
| 127 | 1.3.4.1 | **Release 4.0 (Final Release)** |  | 53.5d? | 2007-06-11 A | 2007-08-24 A |  | 100% | 2007-05-30 | 2007-08-20 | 57d |  |  | 874h | 874h |
| 128 | 1.3.4.1.1 | **Change architecture of Application Service** |  | 9.5d | 2007-06-26 A | 2007-07-10 A |  | 100% | 2007-06-22 | 2007-07-06 | 9.5d |  |  | 80h | 80h |
| 129 | 1.3.4.1.1.1 | Design |  | 4d | 2007-06-26 A | 2007-06-29 A | 101, 102 | 100% | 2007-06-22 | 2007-06-27 | 4d |  | Satish | 32h | 32h |
| 130 | 1.3.4.1.1.2 | Design Review |  | 0.25d | 2007-07-02 A | 2007-07-02 A | 129 | 100% | 2007-06-28 | 2007-06-28 | 0.25d |  | Dan; Doug M.; Satish | 6h | 6h |
| 131 | 1.3.4.1.1.3 | Design Update |  | 0.25d | 2007-07-02 A | 2007-07-02 A | 130 | 100% | 2007-06-28 | 2007-06-28 | 0.25d |  | Satish | 2h | 2h |
| 132 | 1.3.4.1.1.4 | Development |  | 5d | 2007-07-02 A | 2007-07-10 A | 131 | 100% | 2007-06-28 | 2007-07-06 | 5d |  | Satish | 40h | 40h |

Notes:
- 129: Design architecture of Application Service AND design the solution for Supporting multiple ApplicationService instances in the same JVM (task #131)

| ID | WBS | Task | Type | Duration | Start | Finish | Predecessors | Complete | Baseline start | Baseline finish | Baseline duration | Constraint | Resources | Work | Actual work |
| --- | --- | --- | --- | --- | --- | --- | --- | --- | --- | --- | --- | --- | --- | --- | --- |
| 133 | 1.3.4.1.2 | **Support multiple ApplicationService in same JVM** |  | 6d | 2007-07-10 A | 2007-07-18 A |  | 100% | 2007-07-06 | 2007-07-16 | 6d |  |  | 48h | 48h |
| 134 | 1.3.4.1.2.1 | Development/Unit Test |  | 6d | 2007-07-10 A | 2007-07-18 A | 128 | 100% | 2007-07-06 | 2007-07-16 | 6d |  | Satish | 48h | 48h |
| 135 | 1.3.4.1.3 | **Annotation Based Web Services -> Eliminate .ws and .impl classes** |  | 23d | 2007-06-11 A | 2007-07-13 A |  | 100% | 2007-05-30 | 2007-06-18 | 13.5d |  |  | 108h | 108h |
| 136 | 1.3.4.1.3.1 | Design/Prototype |  | 3d | 2007-06-11 A | 2007-06-14 A | 92 | 100% | 2007-05-30 | 2007-06-04 | 3d |  | Dan | 24h | 24h |
| 137 | 1.3.4.1.3.2 | Design Review |  | 0.25d | 2007-06-14 A | 2007-06-14 A | 136 | 100% | 2007-06-04 | 2007-06-04 | 0.25d |  | Dan | 2h | 2h |
| 138 | 1.3.4.1.3.3 | Design Update |  | 0.25d | 2007-06-14 A | 2007-06-14 A | 137 | 100% | 2007-06-04 | 2007-06-04 | 0.25d |  | Dan | 2h | 2h |
| 139 | 1.3.4.1.3.4 | Development/Unit Test |  | 10d | 2007-06-15 A | 2007-07-13 A | 138 | 100% | 2007-06-05 | 2007-06-18 | 10d |  | Satish | 80h | 80h |
| 140 | 1.3.4.1.4 | **Remove duplication of code due to security injection - ACEGI Framework** |  | 10d | 2007-07-06 A | 2007-07-20 A |  | 100% | 2007-06-19 | 2007-07-02 | 10d |  |  | 80h | 80h |
| 141 | 1.3.4.1.4.1 | Development/Unit Test |  | 10d | 2007-07-06 A | 2007-07-20 A | 142 | 100% | 2007-06-19 | 2007-07-02 | 10d |  | Dan | 80h | 80h |
| 142 | 1.3.4.1.5 | **Re-architect information in SpringConfig.xml and DAOConfig.xml** |  | 4.5d | 2007-06-29 A | 2007-07-06 A |  | 100% | 2007-07-03 | 2007-07-10 | 4.5d |  |  | 40h | 40h |
| 143 | 1.3.4.1.5.1 | Design |  | 1d | 2007-06-29 A | 2007-06-29 A | 135 | 100% | 2007-07-03 | 2007-07-03 | 1d |  | Dan | 8h | 8h |
| 144 | 1.3.4.1.5.2 | Design Review |  | 0.25d | 2007-07-02 A | 2007-07-02 A | 143 | 100% | 2007-07-05 | 2007-07-05 | 0.25d |  | Dan; Satish; Charles | 6h | 6h |
| 145 | 1.3.4.1.5.3 | Design Update |  | 0.25d | 2007-07-02 A | 2007-07-02 A | 144 | 100% | 2007-07-05 | 2007-07-05 | 0.25d |  | Dan | 2h | 2h |
| 146 | 1.3.4.1.5.4 | Development |  | 3d | 2007-07-02 A | 2007-07-06 A | 145 | 100% | 2007-07-05 | 2007-07-10 | 3d |  | Dan | 24h | 24h |
| 147 | 1.3.4.1.6 | **Remaining Tasks** |  | 0.75d? | 2007-07-23 A | 2007-07-23 A |  | 100% |  |  |  |  |  | 6h | 6h |
| 148 | 1.3.4.1.6.1 | XSD/XML Mapping should not be generated for excluded classes |  | 0.25d? | 2007-07-23 A | 2007-07-23 A |  | 100% |  |  |  | start no earlier than 2007-07-23 | Dan | 2h | 2h |
| 149 | 1.3.4.1.6.2 | ID attribute not mandatory in XSM Mapping files |  | 0.5d? | 2007-07-23 A | 2007-07-23 A | 148 | 100% |  |  |  |  | Dan | 4h | 4h |
| 150 | 1.3.4.1.7 | Code freeze | milestone | 0d | 2007-07-24 A | 2007-07-24 A | 133, 140 | 100% |  |  |  | start no earlier than 2007-07-24 |  |  |  |
| 151 | 1.3.4.1.8 | Final Release to QA | milestone | 0d | 2007-07-24 A | 2007-07-24 A | 150 | 100% | 2007-07-16 | 2007-07-17 | 1d | start no earlier than 2007-07-24 | Dan |  |  |
| 152 | 1.3.4.1.9 | **QA** |  | 29d? | 2007-07-17 A | 2007-08-24 A |  | 100% | 2007-06-04 | 2007-07-30 | 39d |  |  | 512h | 512h |
| 153 | 1.3.4.1.9.1 | CSM Testing of Iteration 3,4 Complete | milestone | 0d | 2007-07-17 A | 2007-07-17 A |  | 100% |  |  |  | start no earlier than 2007-07-17 |  |  |  |
| 154 | 1.3.4.1.9.2 | Test Development |  | 5d | 2007-07-17 A | 2007-07-23 A | 153 | 100% | 2007-06-04 | 2007-06-11 | 5d |  | QA | 40h | 40h |
| 155 | 1.3.4.1.9.3 | Test Execution |  | 24d | 2007-07-24 A | 2007-08-24 A | 151FS-3d | 100% | 2007-07-16 | 2007-07-30 | 10d | start no earlier than 2007-07-24 | QA | 192h | 192h |
| 156 | 1.3.4.1.9.4 | **Test Support** |  | 24d? | 2007-07-24 A | 2007-08-24 A | 151FS-3d, 154 | 100% | 2007-07-03 | 2007-07-17 | 10d |  |  | 280h | 280h |
| 157 | 1.3.4.1.9.4.1 | **Known Bug Fixes** |  | 13d? | 2007-07-24 A | 2007-08-09 A |  | 100% |  |  |  |  |  | 122h | 122h |
| 158 | 1.3.4.1.9.4.1.1 | Insert Rolename in the web tier (getMother(), getFather()) |  | 1d | 2007-07-24 A | 2007-07-24 A | 147 | 100% |  |  |  |  | Dan | 8h | 8h |
| 159 | 1.3.4.1.9.4.1.2 | Fix UI width problem (width, scrollbars) |  | 1d? | 2007-07-25 A | 2007-07-25 A | 158 | 100% |  |  |  |  | Dan | 8h | 8h |
| 160 | 1.3.4.1.9.4.1.3 | Error handling in classcache for duplicate classes |  | 0.25d? | 2007-07-26 A | 2007-07-26 A | 159 | 100% |  |  |  |  | Dan | 2h | 2h |
| 161 | 1.3.4.1.9.4.1.4 | Improved logging/trace messages |  | 2d | 2007-07-26 A | 2007-07-30 A | 160 | 100% | 2007-07-10 | 2007-07-12 | 2.5d |  | Dan | 16h | 16h |

Notes:
- 135: Annotation Based Web Services had to be dropped due to the inability of Xfire to be able to cast java.lang.Object for collections to a typed object on the client side. In it's place we have switched to Axis 1.* to directly map to domain objects from the web service.
- 141: Includes integrating CSM developed components

| ID | WBS | Task | Type | Duration | Start | Finish | Predecessors | Complete | Remaining | Baseline start | Baseline finish | Baseline duration | Total slack | Constraint | Resources | Work | Actual work |
| --- | --- | --- | --- | --- | --- | --- | --- | --- | --- | --- | --- | --- | --- | --- | --- | --- | --- |
| 162 | 1.3.4.1.9.4.1.5 | **Query Translator Fix for Nested Criteria** |  | 6d | 2007-07-26 A | 2007-08-02 A |  | 100% |  |  |  |  |  |  |  | 48h | 48h |
| 163 | 1.3.4.1.9.4.1.5.1 | Development |  | 5d | 2007-07-26 A | 2007-08-01 A | 151FS+2d | 100% |  |  |  |  |  |  | Satish | 40h | 40h |
| 164 | 1.3.4.1.9.4.1.5.2 | Unit Test |  | 1d | 2007-08-02 A | 2007-08-02 A | 163 | 100% |  |  |  |  |  |  | Satish | 8h | 8h |
| 165 | 1.3.4.1.9.4.1.6 | **Security implementation** |  | 5d | 2007-08-03 A | 2007-08-09 A |  | 100% |  |  |  |  |  |  |  | 40h | 40h |
| 166 | 1.3.4.1.9.4.1.6.1 | Authentication (Web, Client, WS) |  | 1d | 2007-08-03 A | 2007-08-03 A | 162 | 100% |  |  |  |  |  |  | Satish | 8h | 8h |
| 167 | 1.3.4.1.9.4.1.6.2 | Authorization |  | 1d | 2007-08-06 A | 2007-08-06 A | 166 | 100% |  |  |  |  |  |  | Satish | 8h | 8h |
| 168 | 1.3.4.1.9.4.1.6.3 | CSM Integration |  | 1d | 2007-08-07 A | 2007-08-07 A | 167 | 100% |  |  |  |  |  |  | Satish | 8h | 8h |
| 169 | 1.3.4.1.9.4.1.6.4 | Build scripts |  | 1d | 2007-08-08 A | 2007-08-08 A | 168 | 100% |  |  |  |  |  |  | Satish | 8h | 8h |
| 170 | 1.3.4.1.9.4.1.6.5 | Integration Tests |  | 1d | 2007-08-09 A | 2007-08-09 A | 169 | 100% |  |  |  |  |  |  | Satish | 8h | 8h |
| 171 | 1.3.4.1.9.4.2 | Bug Fixes |  | 19.75d | 2007-07-30 A | 2007-08-24 A | 161 | 100% |  |  |  |  |  | finish no earlier than 2007-08-24 | Dan | 158h | 158h |
| 172 | 1.4 | **Transition** |  | 50d | 2007-08-27 A | 2007-11-02 |  | 86% | 7.14d | 2007-07-30 | 2007-09-06 | 28d | 34.5d |  |  | 636h | 556h |
| 173 | 1.4.1 | **Documentation** |  | 35.25d | 2007-08-27 A | 2007-10-15 A |  | 100% |  | 2007-07-30 | 2007-08-28 | 21d |  |  |  | 452h | 452h |
| 174 | 1.4.1.1 | **SDK 4.0 Guide** |  | 23.25d | 2007-08-27 A | 2007-09-27 A |  | 100% |  | 2007-07-30 | 2007-08-22 | 10d |  |  |  | 322h | 322h |
| 175 | 1.4.1.1.1 | Write Guide |  | 12d | 2007-08-27 A | 2007-09-11 A | 171 | 100% |  |  |  |  |  |  | Satish; Dan | 192h | 192h |
| 176 | 1.4.1.1.2 | Internal Review |  | 0.25d | 2007-09-12 A | 2007-09-12 A | 175 | 100% |  |  |  |  |  |  | Ekagra | 2h | 2h |
| 177 | 1.4.1.1.3 | Update Per Review |  | 5d | 2007-09-12 A | 2007-09-19 A | 176 | 100% |  |  |  |  |  |  | Satish; Dan | 80h | 80h |
| 178 | 1.4.1.1.4 | Draft for Review By Tech Writing | milestone | 0d | 2007-09-19 A | 2007-09-19 A | 177 | 100% |  |  |  |  |  |  |  |  |  |
| 179 | 1.4.1.1.5 | Tech Writing Review |  | 6d | 2007-09-19 A | 2007-09-27 A | 177 | 100% |  |  |  |  |  |  | Wendy | 48h | 48h |
| 180 | 1.4.1.2 | **SDK 4.0 Migration Guide** |  | 11.25d | 2007-09-28 A | 2007-10-15 A | 152 | 100% |  | 2007-07-30 | 2007-08-20 | 15d |  |  |  | 130h | 130h |
| 181 | 1.4.1.2.1 | Write Guide |  | 3d | 2007-09-28 A | 2007-10-02 A |  | 100% |  |  |  |  |  | start no earlier than 2007-09-28 | Dan; Satish | 48h | 48h |
| 182 | 1.4.1.2.2 | Internal Review |  | 0.25d | 2007-10-03 A | 2007-10-03 A | 181 | 100% |  |  |  |  |  |  | Ekagra | 2h | 2h |
| 183 | 1.4.1.2.3 | Update Per Review |  | 2d | 2007-10-03 A | 2007-10-05 A | 182 | 100% |  |  |  |  |  |  | Dan; Satish | 32h | 32h |
| 184 | 1.4.1.2.4 | Draft for Review By Tech Writing | milestone | 0d | 2007-10-05 A | 2007-10-05 A | 183 | 100% |  |  |  |  |  |  |  |  |  |
| 185 | 1.4.1.2.5 | Tech Writing Review |  | 6d | 2007-10-05 A | 2007-10-15 A | 184 | 100% |  |  |  |  |  |  | Wendy | 48h | 48h |

| ID | WBS | Task | Type | Duration | Start | Finish | Predecessors | Complete | Remaining | Baseline start | Baseline finish | Baseline duration | Total slack | Free slack | Constraint | Resources | Work | Actual work |
| --- | --- | --- | --- | --- | --- | --- | --- | --- | --- | --- | --- | --- | --- | --- | --- | --- | --- | --- |
| 186 | 1.4.2 | **Production Packaging** |  | 27.5d | 2007-09-26 A | 2007-11-02 |  | 58% | 11.46d | 2007-08-27 | 2007-09-06 | 8d | 34.5d |  |  |  | 184h | 104h |
| 187 | 1.4.2.1 | Create Database Scripts |  | 2d | 2007-09-26 A | 2007-09-28 A | 174 | 100% |  |  |  |  |  |  |  | Satish | 16h | 16h |
| 188 | 1.4.2.2 | QA Database Scripts and Argo Model |  | 5d | 2007-09-28 | 2007-10-05 | 187 |  |  |  |  |  | 55d |  |  | Aynur | 40h |  |
| 189 | 1.4.2.3 | Update Zope Site |  | 2d | 2007-09-28 A | 2007-10-02 A | 187 | 100% |  | 2007-08-27 | 2007-08-29 | 2d |  |  |  | Dan | 16h | 16h |
| 190 | 1.4.2.4 | Zope Site Approval |  | 2d | 2007-10-02 A | 2007-10-04 A | 189 | 100% |  |  |  |  |  |  |  | Avinash | 16h | 16h |
| 191 | 1.4.2.5 | Develop Production promotion Documentation |  | 2d | 2007-10-04 A | 2007-10-08 A | 190 | 100% |  | 2007-08-28 | 2007-08-30 | 2d |  |  |  | Satish | 16h | 16h |
| 192 | 1.4.2.6 | Push to Produciton |  | 5d | 2007-10-29 A | 2007-11-02 | 189, 191 | 50% | 2.5d | 2007-08-30 | 2007-09-06 | 5d | 0d |  | start no earlier than 2007-08-30 | Terpsys; Satish | 80h | 40h |
| 193 | 1.4.3 | 4.0 Release Complete | milestone | 0d | 2007-11-02 | 2007-11-02 | 192 |  |  | 2007-09-06 | 2007-09-06 | 0d | 34.5d |  |  |  |  |  |
| 194 | 2 | **caCORE SDK v4.0.1** |  | 54d | 2007-10-08 | 2007-12-21 |  |  |  | 2007-08-20 | 2007-10-16 | 41.5d | 0d |  |  |  | 860.33h |  |
| 195 | 2.1 | **Iteration 1** |  | 54d | 2007-10-08 | 2007-12-21 |  |  |  | 2007-08-20 | 2007-10-16 | 41.5d | 0d |  |  |  | 860.33h |  |
| 196 | 2.1.1 | **Elaboration** |  | 3d | 2007-10-29 | 2007-10-31 |  |  |  | 2007-08-20 | 2007-08-23 | 3d | 36.5d |  |  |  | 51h |  |
| 197 | 2.1.1.1 | Review Client Feature Request/Revise Task Plan |  | 3d | 2007-10-29 | 2007-10-31 |  |  |  | 2007-08-20 | 2007-08-23 | 3d | 36.5d |  | start no earlier than 2007-10-29 | Charles; Avinash; Satish [15%] | 51h |  |
| 198 | 2.1.2 | **Construction** |  | 49.5d | 2007-10-08 | 2007-12-14 |  |  |  | 2007-08-29 | 2007-10-10 | 30d | 4.5d |  |  |  | 489.33h |  |
| 199 | 2.1.2.1 | **Support interfaces (including marker interfaces), abstract class, enumeration** |  | 14.5d | 2007-11-05 | 2007-11-23 |  |  |  | 2007-08-29 | 2007-09-18 | 14.5d | 0d |  |  |  | 116h |  |
| 200 | 2.1.2.1.1 | Design |  | 1.5d | 2007-11-05 | 2007-11-06 | 192 |  |  | 2007-08-29 | 2007-08-30 | 1.5d | 0d |  |  | Dan | 12h |  |
| 201 | 2.1.2.1.2 | Design Review |  | 0.5d | 2007-11-06 | 2007-11-06 | 200 |  |  | 2007-08-31 | 2007-08-31 | 0.5d | 0d |  |  | Dan | 4h |  |
| 202 | 2.1.2.1.3 | Design Update |  | 0.5d | 2007-11-07 | 2007-11-07 | 201 |  |  | 2007-08-31 | 2007-08-31 | 0.5d | 0d |  |  | Dan | 4h |  |
| 203 | 2.1.2.1.4 | Development/Unit Test |  | 12d | 2007-11-07 | 2007-11-23 | 202 |  |  | 2007-09-03 | 2007-09-18 | 12d | 0d |  |  | Dan | 96h |  |
| 204 | 2.1.2.2 | **Allow user to Specify name of the remoteService.xml file externally** |  | 2d | 2007-11-23 | 2007-11-27 |  |  |  | 2007-09-19 | 2007-09-20 | 2d | 0d |  |  |  | 16h |  |
| 205 | 2.1.2.2.1 | Development/Unit Test |  | 2d | 2007-11-23 | 2007-11-27 | 199 |  |  | 2007-09-19 | 2007-09-20 | 2d | 0d |  |  | Dan | 16h |  |
| 206 | 2.1.2.3 | **Allow to use composition/class as attributes** |  | 6.5d | 2007-10-08 | 2007-10-16 |  |  |  | 2007-08-30 | 2007-09-07 | 6.5d | 22d | 0d |  |  | 56h |  |
| 207 | 2.1.2.3.1 | Design |  | 1d | 2007-10-08 | 2007-10-09 | 191 |  |  | 2007-08-30 | 2007-08-31 | 1d | 22d | 0d |  | Satish | 8h |  |
| 208 | 2.1.2.3.2 | Design Review |  | 0.25d | 2007-10-09 | 2007-10-09 | 207 |  |  | 2007-08-31 | 2007-08-31 | 0.25d | 22d | 0d |  | Dan; Satish; Charles | 6h |  |
| 209 | 2.1.2.3.3 | Design Update |  | 0.25d | 2007-10-09 | 2007-10-09 | 208 |  |  | 2007-08-31 | 2007-08-31 | 0.25d | 22d | 0d |  | Satish | 2h |  |
| 210 | 2.1.2.3.4 | Development/Unit Test |  | 5d | 2007-10-10 | 2007-10-16 | 209 |  |  | 2007-09-03 | 2007-09-07 | 5d | 22d |  |  | Satish | 40h |  |

| ID | WBS | Task | Duration | Start | Finish | Predecessors | Baseline start | Baseline finish | Baseline duration | Total slack | Free slack | Constraint | Resources | Work |
| --- | --- | --- | --- | --- | --- | --- | --- | --- | --- | --- | --- | --- | --- | --- |
| 211 | 2.1.2.4 | **Transient Variable Support** | 7.5d | 2007-10-17 | 2007-10-26 |  | 2007-09-10 | 2007-09-19 | 7.5d | 22d |  |  |  | 60h |
| 212 | 2.1.2.4.1 | Design | 1d | 2007-10-17 | 2007-10-17 | 206 | 2007-09-10 | 2007-09-10 | 1d | 22d | 0d |  | Satish | 8h |
| 213 | 2.1.2.4.2 | Design Review | 0.25d | 2007-10-18 | 2007-10-18 | 212 | 2007-09-11 | 2007-09-11 | 0.25d | 22d | 0d |  | Satish | 2h |
| 214 | 2.1.2.4.3 | Design Update | 0.25d | 2007-10-18 | 2007-10-18 | 213 | 2007-09-11 | 2007-09-11 | 0.25d | 22d | 0d |  | Satish | 2h |
| 215 | 2.1.2.4.4 | Development/Unit Test | 6d | 2007-10-18 | 2007-10-26 | 214 | 2007-09-11 | 2007-09-19 | 6d | 22d |  |  | Satish | 48h |
| 216 | 2.1.2.5 | **QA** | 22d | 2007-11-07 | 2007-12-07 |  | 2007-09-03 | 2007-10-02 | 22d | 4.5d | 0d |  |  | 157.33h |
| 217 | 2.1.2.5.1 | Test Development | 5d | 2007-11-07 | 2007-11-14 | 202 | 2007-09-03 | 2007-09-07 | 5d | 21.5d |  | start no earlier than 2007-08-06 | QA | 40h |
| 218 | 2.1.2.5.2 | Test Execution | 8d | 2007-11-27 | 2007-12-07 | 211, 204 | 2007-09-21 | 2007-10-02 | 8d | 4.5d |  |  | QA | 64h |
| 219 | 2.1.2.5.3 | Test Support | 8d | 2007-11-27 | 2007-12-07 | 211, 204 | 2007-09-21 | 2007-10-02 | 8d | 4.5d |  |  | Satish [50%]; Dan [50%] | 53.33h |
| 220 | 2.1.2.6 | **Integration Testing** | 5.5d | 2007-12-07 | 2007-12-14 |  | 2007-10-03 | 2007-10-10 | 5.5d | 4.5d |  |  |  | 84h |
| 221 | 2.1.2.6.1 | Promote to Staging | 0.5d | 2007-12-07 | 2007-12-07 | 216 | 2007-10-03 | 2007-10-03 | 0.5d | 4.5d | 0d |  | Dan | 4h |
| 222 | 2.1.2.6.2 | Test | 5d | 2007-12-10 | 2007-12-14 | 221 | 2007-10-03 | 2007-10-10 | 5d | 4.5d |  |  | QA | 40h |
| 223 | 2.1.2.6.3 | Test Support | 5d | 2007-12-10 | 2007-12-14 | 221 | 2007-10-03 | 2007-10-10 | 5d | 4.5d |  |  | Satish [50%]; Dan [50%] | 40h |
| 224 | 2.1.3 | **Transition** | 18d | 2007-11-27 | 2007-12-21 |  | 2007-09-21 | 2007-10-16 | 18d | 0d |  |  | SDK Users | 320h |
| 225 | 2.1.3.1 | **Documentation** | 10d | 2007-11-27 | 2007-12-11 |  | 2007-09-21 | 2007-10-04 | 10d | 0d |  |  |  | 80h |
| 226 | 2.1.3.1.1 | users guide | 5d | 2007-11-27 | 2007-12-04 | 211, 204 | 2007-09-21 | 2007-09-27 | 5d | 0d |  | start no earlier than 2007-06-15 | Satish [50%] | 20h |
| 227 | 2.1.3.1.2 | technical guide | 10d | 2007-11-27 | 2007-12-11 | 211, 204 | 2007-09-21 | 2007-10-04 | 10d | 0d |  | start no earlier than 2007-06-15 | Dan [50%] | 40h |
| 228 | 2.1.3.1.3 | How to examples | 5d | 2007-12-04 | 2007-12-11 | 226 | 2007-09-28 | 2007-10-04 | 5d | 0d |  | start no earlier than 2007-06-15 | Satish [50%] | 20h |
| 229 | 2.1.3.2 | **Production Packaging** | 8d | 2007-12-11 | 2007-12-21 |  | 2007-10-05 | 2007-10-16 | 8d | 0d |  |  |  | 96h |
| 230 | 2.1.3.2.1 | Update Download Site | 4d | 2007-12-11 | 2007-12-17 | 227 | 2007-10-05 | 2007-10-10 | 4d | 0d |  |  | Dan | 32h |
| 231 | 2.1.3.2.2 | Develop Production promotion Documentation | 4d | 2007-12-11 | 2007-12-17 | 228 | 2007-10-05 | 2007-10-10 | 4d | 0d |  |  | Satish | 32h |
| 232 | 2.1.3.2.3 | Push to Produciton | 4d | 2007-12-17 | 2007-12-21 | 230, 231 | 2007-10-11 | 2007-10-16 | 4d | 0d |  | start no earlier than 2007-08-30 | Terpsys | 32h |
